# Enigma

Schedule from MS Project, 2014-03-13 to 2014-09-10, costs in kn.

## Calendars

- Standard: Mon-Fri 08:00-12:00, 13:00-17:00; Sat-Sun off.

## Resources

| Resource | Rate |
| --- | --- |
| Ivan Dokuzović | 40 |
| Karlo Duganić | 40 |
| Anabel Li Kečkeš | 40 |
| Dajana Jeđud | 40 |
| Nikola Buković | 40 |
| Računalo |  |

## Schedule

| ID | WBS | Task | Type | Duration | Start | Finish | Predecessors | Total slack | Resources | Work | Cost |
| --- | --- | --- | --- | --- | --- | --- | --- | --- | --- | --- | --- |
| 1 | 1 | **Početak projekta** |  | 128d | 2014-03-13 08:00 | 2014-09-08 17:00 |  | 0d |  | 2116.62h | 84,665 |
| 2 | 1.1 | **Analiza projekta** |  | 19d | 2014-03-13 08:00 | 2014-04-08 17:00 |  | 0d |  | 40.62h | 1,625 |
| 3 | 1.1.1 | **Planiranje projekta** |  | 1.12d | 2014-03-13 08:00 | 2014-03-14 09:00 |  | 0d |  | 22.62h | 905 |
| 4 | 1.1.1.1 | Sastanak tima | manual | 2h | 2014-03-13 08:00 | 2014-03-13 10:00 |  |  | Anabel Li Kečkeš; Dajana Jeđud; Ivan Dokuzović; Karlo Duganić; Nikola Buković | 2h | 80 |
| 5 | 1.1.1.2 | Analiza zahtjeva | manual | 3h | 2014-03-13 10:00 | 2014-03-13 14:00 | 4 |  | Anabel Li Kečkeš; Dajana Jeđud; Ivan Dokuzović; Karlo Duganić; Nikola Buković | 15h | 600 |
| 6 | 1.1.1.3 | Podjela projekta na faze | manual | 2h | 2014-03-13 14:00 | 2014-03-13 16:00 | 5 |  | Ivan Dokuzović | 1h | 40 |
| 7 | 1.1.1.4 | Definiranje uloga u timu | manual | 1h | 2014-03-13 16:00 | 2014-03-13 17:00 | 6 |  | Ivan Dokuzović | 0.25h | 10 |
| 8 | 1.1.1.5 | Podjela zadatka | manual | 1h | 2014-03-14 08:00 | 2014-03-14 09:00 | 7 |  | Ivan Dokuzović; Anabel Li Kečkeš; Dajana Jeđud; Karlo Duganić; Nikola Buković | 4.38h | 175 |
| 9 | 1.1.2 | **Izrada dokumentacije** |  | 1d | 2014-04-08 08:00 | 2014-04-08 17:00 | 3 | 0d |  | 18h | 720 |
| 10 | 1.1.2.1 | Sastanak tima | manual | 2h | 2014-04-08 08:00 | 2014-04-08 10:00 |  |  | Anabel Li Kečkeš; Dajana Jeđud; Ivan Dokuzović; Karlo Duganić; Nikola Buković | 10h | 400 |
| 11 | 1.1.2.2 | Izrada gantograma | manual | 4h | 2014-04-08 10:00 | 2014-04-08 15:00 | 10 |  | Nikola Buković; Računalo | 4h | 160 |
| 12 | 1.1.2.3 | Definiranje budžeta | manual | 2h | 2014-04-08 15:00 | 2014-04-08 17:00 | 11 |  | Anabel Li Kečkeš; Dajana Jeđud; Računalo | 4h | 160 |
| 13 | 1.2 | **Modeliranje** |  | 7.62d | 2014-04-11 08:00 | 2014-04-22 14:00 | 2 | 0d |  | 164h | 6,560 |
| 14 | 1.2.1 | **Izrada dijagrama** |  | 3.75d | 2014-04-11 08:00 | 2014-04-16 15:00 |  | 0d |  | 81h | 3,240 |
| 15 | 1.2.1.1 | Sastanak tima | manual | 2h | 2014-04-11 08:00 | 2014-04-11 10:00 |  |  | Anabel Li Kečkeš; Dajana Jeđud; Ivan Dokuzović; Karlo Duganić; Nikola Buković | 10h | 400 |
| 16 | 1.2.1.2 | Izrada dijagrama slučajeva korištenja | manual | 4h | 2014-04-11 10:00 | 2014-04-11 15:00 | 15 |  | Računalo; Ivan Dokuzović | 4h | 160 |
| 17 | 1.2.1.3 | Izrada dijagrama slijeda | manual | 6h | 2014-04-11 15:00 | 2014-04-14 12:00 | 16 |  | Anabel Li Kečkeš; Dajana Jeđud; Računalo | 12h | 480 |
| 18 | 1.2.1.4 | Izrada dijagram aktivnosti | manual | 5h | 2014-04-14 13:00 | 2014-04-15 09:00 | 17 |  | Anabel Li Kečkeš; Dajana Jeđud; Računalo | 10h | 400 |
| 19 | 1.2.1.5 | Izrada dijagrama klasa | manual | 5h | 2014-04-15 09:00 | 2014-04-15 15:00 | 18 |  | Karlo Duganić; Računalo | 5h | 200 |
| 20 | 1.2.1.6 | Izrada ERA modela | manual | 8h | 2014-04-15 15:00 | 2014-04-16 15:00 | 19 |  | Ivan Dokuzović; Računalo; Anabel Li Kečkeš; Dajana Jeđud; Karlo Duganić; Nikola Buković | 40h | 1,600 |
| 21 | 1.2.2 | **Otklanjanje greška** |  | 3.62d | 2014-04-17 08:00 | 2014-04-22 14:00 | 14 | 0d |  | 63h | 2,520 |
| 22 | 1.2.2.1 | Ispravak dijagrama slučajeva korištenja | manual | 5h | 2014-04-17 08:00 | 2014-04-17 14:00 |  |  | Ivan Dokuzović; Karlo Duganić; Računalo; Nikola Buković | 15h | 600 |
| 23 | 1.2.2.2 | Ispravak dijagrama slijeda | manual | 6h | 2014-04-17 14:00 | 2014-04-18 11:00 | 22 |  | Anabel Li Kečkeš; Dajana Jeđud; Računalo | 12h | 480 |
| 24 | 1.2.2.3 | Ispravak dijagrama aktivnosti | manual | 6h | 2014-04-18 11:00 | 2014-04-21 09:00 | 23 |  | Anabel Li Kečkeš; Dajana Jeđud; Računalo | 12h | 480 |
| 25 | 1.2.2.4 | Ispravak dijagrama klasa | manual | 6h | 2014-04-21 09:00 | 2014-04-21 16:00 | 24 |  | Ivan Dokuzović; Karlo Duganić; Nikola Buković; Računalo | 18h | 720 |
| 26 | 1.2.2.5 | Ispravak ERA modela | manual | 6h | 2014-04-21 16:00 | 2014-04-22 14:00 | 25 |  | Ivan Dokuzović; Računalo | 6h | 240 |

| ID | WBS | Task | Type | Duration | Start | Finish | Predecessors | Total slack | Resources | Work | Cost |
| --- | --- | --- | --- | --- | --- | --- | --- | --- | --- | --- | --- |
| 27 | 1.2.3 | **Provjera izrađenog** |  | 0.5d | 2014-04-22 08:00 | 2014-04-22 12:00 | 21 | 0d |  | 20h | 800 |
| 28 | 1.2.3.1 | Provjera dokumentacije | manual | 2h | 2014-04-22 08:00 | 2014-04-22 10:00 |  |  | Anabel Li Kečkeš; Dajana Jeđud; Ivan Dokuzović; Karlo Duganić; Nikola Buković; Računalo | 10h | 400 |
| 29 | 1.2.3.2 | Provjera dijagrama | manual | 2h | 2014-04-22 10:00 | 2014-04-22 12:00 | 28 |  | Anabel Li Kečkeš; Dajana Jeđud; Ivan Dokuzović; Karlo Duganić; Nikola Buković; Računalo | 10h | 400 |
| 30 | 1.3 | **Programska implementacija** |  | 27d | 2014-04-22 08:00 | 2014-05-28 17:00 |  | 0d |  | 507h | 20,280 |
| 31 | 1.3.1 | **Implementacijske aktivnosti** |  | 1.12d | 2014-04-22 08:00 | 2014-04-23 09:00 |  | 0d |  | 78h | 3,120 |
| 32 | 1.3.1.1 | Izrada preliminarnih formi u C# | manual | 9h | 2014-04-22 08:00 | 2014-04-23 09:00 |  |  | Anabel Li Kečkeš; Dajana Jeđud; Računalo | 18h | 720 |
| 33 | 1.3.1.2 | Izrada preliminarne dokumentacije | manual | 7h | 2014-04-22 08:00 | 2014-04-22 16:00 | 32 |  | Anabel Li Kečkeš; Dajana Jeđud; Ivan Dokuzović; Karlo Duganić; Nikola Buković; Računalo | 35h | 1,400 |
| 34 | 1.3.1.3 | Provjera dokumentacije | manual | 5h | 2014-04-22 08:00 | 2014-04-22 14:00 | 33 |  | Anabel Li Kečkeš; Dajana Jeđud; Ivan Dokuzović; Karlo Duganić; Nikola Buković; Računalo | 25h | 1,000 |
| 35 | 1.3.2 | **Izrada aplikacije** |  | 7d | 2014-05-13 08:00 | 2014-05-21 17:00 | 31 | 0d |  | 194h | 7,760 |
| 36 | 1.3.2.1 | Izrada baze podatka | manual | 2d | 2014-05-13 08:00 | 2014-05-14 17:00 |  |  | Ivan Dokuzović; Računalo | 16h | 640 |
| 37 | 1.3.2.2 | Dopuna početnih formi | manual | 2d | 2014-05-15 08:00 | 2014-05-16 17:00 | 36 |  | Ivan Dokuzović; Karlo Duganić; Nikola Buković; Računalo | 48h | 1,920 |
| 38 | 1.3.2.3 | Izrada programskog rješenja | manual | 2d | 2014-05-19 08:00 | 2014-05-20 17:00 | 37 |  | Anabel Li Kečkeš; Dajana Jeđud; Ivan Dokuzović; Karlo Duganić; Nikola Buković; Računalo | 80h | 3,200 |
| 39 | 1.3.2.4 | Dopuna dokumentacije | manual | 1d | 2014-05-20 17:00 | 2014-05-21 17:00 | 38 |  | Anabel Li Kečkeš; Dajana Jeđud; Ivan Dokuzović; Karlo Duganić; Nikola Buković; Računalo | 40h | 1,600 |
| 40 | 1.3.2.5 | Sastanak tima | manual | 2h | 2014-05-20 17:00 | 2014-05-21 10:00 | 39 |  | Anabel Li Kečkeš; Dajana Jeđud; Ivan Dokuzović; Karlo Duganić; Nikola Buković; Računalo | 10h | 400 |
| 41 | 1.3.3 | **Testiranje aplikacije** |  | 7d | 2014-05-20 08:00 | 2014-05-28 17:00 | 35 |  |  | 235h | 9,400 |
| 42 | 1.3.3.1 | Sastanak tima | manual | 2h | 2014-05-20 08:00 | 2014-05-20 10:00 |  |  | Anabel Li Kečkeš; Dajana Jeđud; Ivan Dokuzović; Karlo Duganić; Nikola Buković; Računalo | 10h | 400 |
| 43 | 1.3.3.2 | Testiranje aplikacije | manual | 5h | 2014-05-20 10:00 | 2014-05-20 16:00 | 42 |  | Ivan Dokuzović; Karlo Duganić; Nikola Buković; Računalo | 15h | 600 |
| 44 | 1.3.3.3 | Otklanjanje greška, dopuna aplikacije | manual | 5h | 2014-05-20 15:00 | 2014-05-21 11:00 | 43 |  | Anabel Li Kečkeš; Dajana Jeđud; Računalo | 10h | 400 |
| 45 | 1.3.3.4 | Dopuna dokumentacije | manual | 5d | 2014-05-21 11:00 | 2014-05-28 11:00 | 44 |  | Anabel Li Kečkeš; Dajana Jeđud; Ivan Dokuzović; Karlo Duganić; Nikola Buković; Računalo | 200h | 8,000 |
| 46 | 1.4 | **Ispravak grešaka** |  | 6d | 2014-07-04 08:00 | 2014-07-13 17:00 |  | 0d | Anabel Li Kečkeš; Dajana Jeđud; Ivan Dokuzović; Karlo Duganić; Nikola Buković; Računalo | 600h | 24,000 |
| 47 | 1.4.1 | Promjena tehnologije za rad s bazom podataka | manual | 2d | 2014-07-04 08:00 | 2014-07-07 17:00 |  |  | Anabel Li Kečkeš; Dajana Jeđud; Ivan Dokuzović; Karlo Duganić; Nikola Buković; Računalo | 80h | 3,200 |
| 48 | 1.4.2 | Kreiranje nove baze podataka | manual | 4d | 2014-07-07 08:00 | 2014-07-10 17:00 |  |  | Anabel Li Kečkeš; Dajana Jeđud; Ivan Dokuzović; Karlo Duganić; Nikola Buković; Računalo | 160h | 6,400 |
| 49 | 1.4.3 | Prilagođavanje sustava novoj bazi podataka | manual | 3d | 2014-07-10 08:00 | 2014-07-13 17:00 |  |  | Anabel Li Kečkeš; Dajana Jeđud; Ivan Dokuzović; Karlo Duganić; Nikola Buković; Računalo | 120h | 4,800 |
| 50 | 1.5 | **Dorada projekta** |  | 10d | 2014-08-26 08:00 | 2014-09-08 17:00 |  | 0d | Anabel Li Kečkeš; Dajana Jeđud; Ivan Dokuzović; Karlo Duganić; Nikola Buković; Računalo | 805h | 32,200 |
| 51 | 1.5.1 | Sastanak tima | manual | 1h | 2014-08-26 08:00 | 2014-08-26 09:00 |  |  | Anabel Li Kečkeš; Dajana Jeđud; Ivan Dokuzović; Karlo Duganić; Nikola Buković; Računalo | 5h | 200 |
| 52 | 1.5.2 | Dorada aplikacije | manual | 5d | 2014-09-01 08:00 | 2014-09-05 17:00 |  |  | Anabel Li Kečkeš; Dajana Jeđud; Ivan Dokuzović; Karlo Duganić; Nikola Buković; Računalo | 200h | 8,000 |
| 53 | 1.5.3 | Testiranje aplikacije | manual | 2d | 2014-09-05 08:00 | 2014-09-06 17:00 |  |  | Anabel Li Kečkeš; Dajana Jeđud; Ivan Dokuzović; Karlo Duganić; Nikola Buković; Računalo | 80h | 3,200 |
| 54 | 1.5.4 | Dopuna dokumentacije | manual | 2d | 2014-09-07 08:00 | 2014-09-08 17:00 |  |  | Anabel Li Kečkeš; Dajana Jeđud; Ivan Dokuzović; Karlo Duganić; Nikola Buković; Računalo | 80h | 3,200 |
| 55 | 1.5.5 | Uređivanje grafičkog sučelja | manual | 1d | 2014-09-08 08:00 | 2014-09-08 17:00 |  |  | Anabel Li Kečkeš; Dajana Jeđud; Ivan Dokuzović; Karlo Duganić; Nikola Buković; Računalo | 40h | 1,600 |
| 56 | 2 | Aplikacija završena | manual | 1d | 2014-09-09 08:00 | 2014-09-09 17:00 |  |  |  |  |  |
| 57 | 3 | Javna obrana projekta | manual | 1d | 2014-09-10 08:00 | 2014-09-10 17:00 |  |  | Anabel Li Kečkeš; Dajana Jeđud; Ivan Dokuzović; Karlo Duganić; Nikola Buković; Računalo | 40h | 1,600 |
